# PlanningValidation

Schedule from MS Project, 2013-03-04 to 2013-04-30, A marks actual dates.

## Calendars

- Standard[Imported]: Mon-Fri 08:00-12:00, 13:00-17:00; Sat-Sun off.

## Resources

| Resource | Group |
| --- | --- |
| Non affecté |  |
| Andrei | Validation |
| Anton | Validation |
| Olga | Validation |
| Valid-FLO |  |
| TestBench |  |

## Schedule

| ID | WBS | Task | Type | Duration | Start | Finish | Predecessors | Complete | Remaining | Baseline start | Baseline finish | Baseline duration | Total slack | Free slack | Constraint | Resources | Work | Actual work |
| --- | --- | --- | --- | --- | --- | --- | --- | --- | --- | --- | --- | --- | --- | --- | --- | --- | --- | --- |
| 1 | 1 | **STR3** |  | 19d | 2013-03-11 A | 2013-04-04 |  | 42% | 10.99d | 2013-03-11 | 2013-04-04 | 19d | 17d |  |  |  | 408h | 172h |
| 2 | 1.1 | VTD - Control and Monitor the Batteries Charge |  | 1d | 2013-03-29 | 2013-03-29 |  |  |  | 2013-03-29 | 2013-03-29 | 1d | 21d | 19d | start no earlier than 2013-03-29 | Olga | 8h |  |
| 3 | 1.2 | VTD - Control of microclimate system |  | 3d | 2013-03-11 A | 2013-03-13 A |  | 100% |  | 2013-03-11 | 2013-03-13 | 3d |  |  |  | Andrei | 24h | 24h |
| 4 | 1.3 | VTD - Parking mode in activate state |  | 3d | 2013-03-22 A | 2013-03-25 |  | 50% | 1.5d | 2013-03-22 | 2013-03-25 | 3d | 24d | 2d |  | Andrei | 24h | 12h |
| 5 | 1.4 | VTD - Manage km-meter and operating times |  | 1d | 2013-03-19 A | 2013-03-19 A |  | 100% |  | 2013-03-19 | 2013-03-19 | 1d |  |  |  | Andrei | 8h | 8h |
| 6 | 1.5 | VTD - Machine Room Ventilation System |  | 1d | 2013-03-20 A | 2013-03-20 A |  | 100% |  | 2013-03-20 | 2013-03-20 | 1d |  |  |  | Andrei | 8h | 8h |
| 7 | 1.6 | VTD - Sanding System Management |  | 3d | 2013-03-14 A | 2013-03-18 A |  | 100% |  | 2013-03-14 | 2013-03-18 | 3d |  |  |  | Andrei | 24h | 24h |
| 8 | 1.7 | VTD - Antislide Protection System (WSP) |  | 3d | 2013-03-23 A | 2013-03-26 |  | 33% | 2d | 2013-03-23 | 2013-03-26 | 3d | 24d | 3d |  | Olga | 24h | 8h |
| 9 | 1.8 | VTD - Brake Substitution Control |  | 3d | 2013-04-02 | 2013-04-04 |  |  |  | 2013-04-02 | 2013-04-04 | 3d | 16d |  | start no earlier than 2013-04-02 | Andrei | 24h |  |
| 10 | 1.9 | VTD - Management of auxiliary loads contactors |  | 3d | 2013-03-18 A | 2013-03-20 A |  | 100% |  | 2013-03-18 | 2013-03-20 | 3d |  |  |  | Olga | 24h | 24h |
| 11 | 1.10 | VTD - Detect and report a fire and fire extinction |  | 1d | 2013-03-25 | 2013-03-25 |  |  |  | 2013-03-25 | 2013-03-25 | 1d | 25d | 5d | start no earlier than 2013-03-25 | Anton | 8h |  |
| 12 | 1.11 | VTD - Axle-box bearings temperature control |  | 1d | 2013-03-27 | 2013-03-27 |  |  |  | 2013-03-27 | 2013-03-27 | 1d | 23d | 8d | start no earlier than 2013-03-27 | Olga | 8h |  |
| 13 | 1.12 | VTD - Bring Train into Service. Part 2 - Selection of active section (cab) |  | 3d | 2013-03-26 | 2013-03-28 |  |  |  | 2013-03-26 | 2013-03-28 | 3d | 21d | 3d | start no earlier than 2013-03-26 | Andrei | 24h |  |
| 14 | 1.13 | VTD - Develop Driving Orders | manual | 4d | 2013-03-13 A | 2013-03-18 A |  | 100% |  | 2013-03-13 | 2013-03-18 | 4d |  |  | start no earlier than 2013-03-13 | Anton | 32h | 32h |
| 15 | 1.14 | VTD - Provision and Management of 110 V Supply |  | 2d | 2013-03-30 | 2013-04-01 |  |  |  | 2013-03-30 | 2013-04-01 | 2d | 18d | 13d | start no earlier than 2013-03-30 | Anton | 16h |  |
| 16 | 1.15 | VTD - Indicate Locomotive Presence (Acoustic Way) |  | 1d | 2013-03-28 | 2013-03-28 |  |  |  | 2013-03-28 | 2013-03-28 | 1d | 22d | 17d | start no earlier than 2013-03-28 | Anton | 8h |  |
| 17 | 1.16 | VTD - Measure and Indicate the Train Speed |  | 1d | 2013-03-23 A | 2013-03-23 A |  | 100% |  | 2013-03-23 | 2013-03-23 | 1d |  |  |  | Anton | 8h | 8h |
| 18 | 1.17 | VTD - Parking brake control |  | 3d | 2013-04-02 | 2013-04-04 |  |  |  | 2013-04-02 | 2013-04-04 | 3d | 16d | 13d | start no earlier than 2013-04-02 | Olga | 24h |  |
| 19 | 1.18 | VTD - Compressed Air Production |  | 2d | 2013-03-30 | 2013-04-01 |  |  |  | 2013-03-30 | 2013-04-01 | 2d | 18d | 11d | start no earlier than 2013-03-30 | Olga | 16h |  |
| 20 | 1.19 | VTD - Manage the high voltage configuration (Desk control) |  | 1d | 2013-03-19 A | 2013-03-19 A |  | 100% |  | 2013-03-19 | 2013-03-19 | 1d |  |  |  | Anton | 8h | 8h |
| 21 | 1.20 | VTD - Compressed Air Distribution |  | 2d | 2013-03-30 | 2013-04-01 |  |  |  | 2013-03-30 | 2013-04-01 | 2d | 18d | 13d | start no earlier than 2013-03-30 | Andrei | 16h |  |
| 22 | 1.21 | VTD - Control the circuit breaker (Desk control) |  | 1d | 2013-03-26 | 2013-03-26 |  |  |  | 2013-03-26 | 2013-03-26 | 1d | 24d | 20d | start no earlier than 2013-03-26 | Anton | 8h |  |
| 23 | 1.22 | VTD - Manage the pantographs (Desk control) |  | 1d | 2013-03-27 | 2013-03-27 |  |  |  | 2013-03-27 | 2013-03-27 | 1d | 23d | 20d | start no earlier than 2013-03-27 | Anton | 8h |  |
| 24 | 1.23 | VTD - Grounding of the locomotive |  | 1d | 2013-03-29 | 2013-03-29 |  |  |  | 2013-03-29 | 2013-03-29 | 1d | 21d | 11d | start no earlier than 2013-03-29 | Andrei | 8h |  |
| 25 | 1.24 | VTD - Pneumatic brake control |  | 2d | 2013-04-02 | 2013-04-03 |  |  |  | 2013-04-02 | 2013-04-03 | 2d | 16d | 4d | start no earlier than 2013-04-02 | Anton | 16h |  |
| 26 | 1.25 | VTD - Tape operating data |  | 1d | 2013-03-15 A | 2013-03-15 A |  | 100% |  | 2013-03-15 | 2013-03-15 | 1d |  |  |  | Olga | 8h | 8h |
| 27 | 1.26 | VTD - Broadcast the time |  | 1d | 2013-03-29 | 2013-03-29 |  |  |  | 2013-03-29 | 2013-03-29 | 1d | 21d | 6d | start no earlier than 2013-03-29 | Anton | 8h |  |
| 28 | 1.27 | VTD - Generate Sounds |  | 1d | 2013-03-28 | 2013-03-28 |  |  |  | 2013-03-28 | 2013-03-28 | 1d | 22d | 4d | start no earlier than 2013-03-28 | Olga | 8h |  |
| 29 | 1.28 | VTD - Administrate locomotive topology (HMI Part) |  | 1d | 2013-03-20 A | 2013-03-20 A |  | 100% |  | 2013-03-20 | 2013-03-20 | 1d |  |  |  | Anton | 8h | 8h |
| 30 | 2 | Test on Testbench | manual | 1d? | 2013-03-04 | 2013-03-04 |  |  |  | 2013-03-04 | 2013-03-04 | 1d? |  |  |  |  |  |  |
| 31 | 3 | STR3 - RUN - Control and Monitor the Batteries Charge |  | 1d | 2013-04-26 | 2013-04-26 | 59, 2 |  |  | 2013-04-26 | 2013-04-26 | 1d | 2d |  | start no earlier than 2013-04-26 | Valid-FLO | 8h |  |
| 32 | 4 | STR3 - RUN - Control of microclimate system |  | 0.5d | 2013-03-25 | 2013-03-25 | 59, 3 |  |  | 2013-03-25 | 2013-03-25 | 0.5d | 26.12d |  | start no earlier than 2013-03-25 | Valid-FLO | 4h |  |
| 33 | 5 | STR3 - RUN - Parking mode in activate state | manual | 2d | 2013-03-28 | 2013-03-29 | 4 |  |  | 2013-03-28 | 2013-03-29 | 2d |  |  |  | Valid-FLO | 16h |  |
| 34 | 6 | STR3 - RUN - Manage km-meter and operating times |  | 1d | 2013-03-30 | 2013-03-30 | 59, 5 |  |  | 2013-03-30 | 2013-03-30 | 1d | 21d |  | start no earlier than 2013-03-30 | Valid-FLO | 8h |  |
| 35 | 7 | STR3 - RUN - Machine Room Ventilation System |  | 1d | 2013-03-26 | 2013-03-26 | 59, 6 |  |  | 2013-03-26 | 2013-03-26 | 1d | 25d |  | start no earlier than 2013-03-26 | Valid-FLO | 8h |  |
| 36 | 8 | STR3 - RUN - Sanding System Management |  | 1d | 2013-03-27 | 2013-03-27 | 59, 7 |  |  | 2013-03-27 | 2013-03-27 | 1d | 24d |  | start no earlier than 2013-03-27 | Valid-FLO | 8h |  |
| 37 | 9 | STR3 - RUN - Antislide Protection System (WSP) |  | 1d | 2013-04-01 | 2013-04-01 | 59, 8 |  |  | 2013-04-01 | 2013-04-01 | 1d | 21d |  | start no earlier than 2013-04-01 | Valid-FLO | 8h |  |
| 38 | 10 | STR3 - RUN - Brake Substitution Control | manual | 2d | 2013-04-29 | 2013-04-30 | 60, 9 |  |  | 2013-04-29 | 2013-04-30 | 2d |  |  |  | Valid-FLO | 16h |  |
| 39 | 11 | STR3 - RUN - Management of auxiliary loads contactors | manual | 2d | 2013-04-05 | 2013-04-08 | 60, 10 |  |  | 2013-04-05 | 2013-04-08 | 2d |  |  |  | Valid-FLO | 16h |  |
| 40 | 12 | STR3 - RUN - Detect and report a fire and fire extinction |  | 1d | 2013-04-02 | 2013-04-02 | 59, 11 |  |  | 2013-04-02 | 2013-04-02 | 1d | 20d |  | start no earlier than 2013-04-02 | Valid-FLO | 8h |  |
| 41 | 13 | STR3 - RUN - Axle-box bearings temperature control |  | 1d | 2013-04-09 | 2013-04-09 | 60, 12 |  |  | 2013-04-09 | 2013-04-09 | 1d | 15d |  | start no earlier than 2013-04-09 | Valid-FLO | 8h |  |
| 42 | 14 | STR3 - RUN - Bring Train into Service. Part 2 - Selection of active section (cab) |  | 2d | 2013-04-03 | 2013-04-04 | 13, 60 |  |  | 2013-04-03 | 2013-04-04 | 2d | 18d |  | start no earlier than 2013-04-03 | Valid-FLO | 16h |  |
| 43 | 15 | STR2 - RUN - Develop Driving Orders |  | 3d | 2013-03-30 | 2013-04-02 | 14, 59 |  |  | 2013-03-30 | 2013-04-02 | 3d | 19d |  | start no earlier than 2013-03-30 | Valid-FLO | 24h |  |
| 44 | 16 | STR2 - RUN - Provision and Management of 110 V Supply |  | 2d | 2013-04-19 | 2013-04-22 | 15, 60 |  |  | 2013-04-19 | 2013-04-22 | 2d | 6d |  | start no earlier than 2013-04-19 | Valid-FLO | 16h |  |
| 45 | 17 | STR2 - RUN - Indicate Locomotive Presence (Acoustic Way) |  | 1d | 2013-04-23 | 2013-04-23 | 16, 60 |  |  | 2013-04-23 | 2013-04-23 | 1d | 5d |  | start no earlier than 2013-04-23 | Valid-FLO | 8h |  |
| 46 | 18 | STR2 - RUN - Measure and Indicate the Train Speed |  | 1d | 2013-04-08 | 2013-04-08 | 17, 60 |  |  | 2013-04-08 | 2013-04-08 | 1d | 16d |  | start no earlier than 2013-04-08 | Valid-FLO | 8h |  |
| 47 | 19 | STR2 - RUN - Parking brake control |  | 2d | 2013-04-24 | 2013-04-25 | 18, 60 |  |  | 2013-04-24 | 2013-04-25 | 2d | 3d |  | start no earlier than 2013-04-24 | Valid-FLO | 16h |  |
| 48 | 20 | STR2 - RUN - Compressed Air Production |  | 2d | 2013-04-17 | 2013-04-18 | 19, 60 |  |  | 2013-04-17 | 2013-04-18 | 2d | 8d |  | start no earlier than 2013-04-17 | Valid-FLO | 16h |  |
| 49 | 21 | STR2 - RUN - Manage the high voltage configuration (Desk control) |  | 1d | 2013-04-23 | 2013-04-23 | 20, 60 |  |  | 2013-04-23 | 2013-04-23 | 1d | 5d |  | start no earlier than 2013-04-23 | Valid-FLO | 8h |  |
| 50 | 22 | STR2 - RUN - Compressed Air Distribution |  | 2d | 2013-04-19 | 2013-04-22 | 21, 60 |  |  | 2013-04-19 | 2013-04-22 | 2d | 6d |  | start no earlier than 2013-04-19 | Valid-FLO | 16h |  |
| 51 | 23 | STR2 - RUN - Control the circuit breaker (Desk control) |  | 1d | 2013-04-24 | 2013-04-24 | 22, 60 |  |  | 2013-04-24 | 2013-04-24 | 1d | 4d |  | start no earlier than 2013-04-24 | Valid-FLO | 8h |  |
| 52 | 24 | STR2 - RUN - Manage the pantographs (Desk control) |  | 1d | 2013-04-25 | 2013-04-25 | 23, 60 |  |  | 2013-04-25 | 2013-04-25 | 1d | 3d |  | start no earlier than 2013-04-25 | Valid-FLO | 8h |  |
| 53 | 25 | STR2 - RUN - Grounding of the locomotive |  | 1d | 2013-04-16 | 2013-04-16 | 24, 60 |  |  | 2013-04-16 | 2013-04-16 | 1d | 10d |  | start no earlier than 2013-04-16 | Valid-FLO | 8h |  |
| 54 | 26 | STR2 - RUN - Pneumatic brake control |  | 3d | 2013-04-10 | 2013-04-12 | 25, 60 |  |  | 2013-04-10 | 2013-04-12 | 3d | 12d |  | start no earlier than 2013-04-10 | Valid-FLO | 24h |  |
| 55 | 27 | STR2 - RUN - Tape operating data |  | 1d | 2013-04-05 | 2013-04-05 | 26, 60 |  |  | 2013-04-05 | 2013-04-05 | 1d | 17d |  | start no earlier than 2013-04-05 | Valid-FLO | 8h |  |
| 56 | 28 | STR2 - RUN - Broadcast the time |  | 1d | 2013-04-09 | 2013-04-09 | 27, 59 |  |  | 2013-04-09 | 2013-04-09 | 1d | 15d |  | start no earlier than 2013-04-09 | Valid-FLO | 8h |  |
| 57 | 29 | STR2 - RUN - Generate Sounds |  | 1d | 2013-04-04 | 2013-04-04 | 28, 60 |  |  | 2013-04-04 | 2013-04-04 | 1d | 18d |  | start no earlier than 2013-04-04 | Valid-FLO | 8h |  |
| 58 | 30 | STR2 - RUN - Administrate locomotive topology (HMI Part) |  | 1d | 2013-04-15 | 2013-04-15 | 29, 60 |  |  | 2013-04-15 | 2013-04-15 | 1d | 11d |  | start no earlier than 2013-04-15 | Valid-FLO | 8h |  |
| 59 | 31 | 0.1.1 | milestone, manual | 0d | 2013-03-25 | 2013-03-25 |  |  |  | 2013-03-25 | 2013-03-25 | 0d |  |  |  |  |  |  |
| 60 | 32 | 3.0.0 | milestone, manual | 0d | 2013-04-01 | 2013-04-01 |  |  |  | 2013-04-01 | 2013-04-01 | 0d |  |  |  |  |  |  |

Notes:
- 3: Checked - Ready to run - OK with Francois for Version A2.
- 6: Checked - Ready to run / Update to A4 to be checked again.
- 7: Checked - Ready to run / FDD A4 - Ok
- 13: FDD E1 - 15/03/2013
- 14: Complete Update required. / FDD C5 to be taken into account. / DDU displays to be checked.
- 40: Ask to andrei
